# Роботи по відновленню ЕБ №10 Бурштинська ТЕС R2

Schedule from MS Project, 2023-03-08 to 2023-09-15, A marks actual dates.

## Calendars

- Стандартный: Mon-Sat 09:00-13:00, 14:00-18:00; Sun off.

## Schedule

| ID | WBS | Task | Type | Duration | Start | Finish | Predecessors | Complete | Remaining | Total slack | Free slack | Constraint |
| --- | --- | --- | --- | --- | --- | --- | --- | --- | --- | --- | --- | --- |
| 1 | 1 | **Робота по відновленню ЕБ №10** |  | 165d | 2023-03-08 A | 2023-09-15 |  | 76% | 40.26d | 0d |  |  |
| 2 | 1.1 | Підписання Договору | milestone | 1d | 2023-03-08 A | 2023-03-08 A |  | 100% |  |  |  | start no earlier than 2023-03-08 |
| 3 | 1.2 | Проведение наб. совета Западэнерго |  | 1d | 2023-03-20 A | 2023-03-20 A |  | 100% |  |  |  | start no earlier than 2023-03-20 |
| 4 | 1.3 | Оплата аванса по Договору |  | 6d | 2023-03-24 A | 2023-03-30 A | 3FS+3d | 100% |  |  |  | start no earlier than 2023-03-24 |
| 5 | 1.4 | Інженерні, вишукувальні роботи та роботи, пов'язані з ПЗ (ІНТЕНЖИН) |  | 64d | 2023-03-17 A | 2023-05-30 A |  | 100% |  |  |  | start no earlier than 2023-03-17 |
| 6 | 1.5 | Оформлення проектної документації |  | 15d | 2023-07-28 | 2023-08-14 | 5FS+50d |  |  | 28d |  |  |
| 7 | 1.6 | Проектування панелі електроцеху блоку №9/10 |  | 10d | 2023-03-30 A | 2023-04-10 A |  | 100% |  |  |  | start no earlier than 2023-03-30 |
| 8 | 1.7 | Дефектація системи кондиціонування |  | 6d | 2023-03-30 A | 2023-04-05 A |  | 100% |  |  |  | start no earlier than 2023-03-30 |
| 9 | 1.8 | **Постачання ПТК OVATION (Специфікація обладнання №1) (ІНТЕНЖИН)** |  | 91d | 2023-03-24 A | 2023-07-07 |  | 85% | 13.5d | 60d |  |  |
| 10 | 1.8.1 | Постачання корпусних елементів шаф |  | 40d | 2023-03-24 A | 2023-05-09 A | 4FS-6d | 100% |  |  |  | start no earlier than 2023-03-17 |
| 11 | 1.8.2 | Постачання модулів Base Assembly |  | 40d | 2023-03-24 A | 2023-05-09 A | 4FS-6d | 100% |  |  |  | start no earlier than 2023-03-24 |
| 12 | 1.8.3 | Збирання шаф OVATION |  | 19d | 2023-05-10 A | 2023-05-31 A | 11 | 100% |  |  |  | finish no earlier than 2023-05-30 |
| 13 | 1.8.4 | Постачання контролерного обладнання |  | 91d | 2023-03-24 A | 2023-07-07 A | 4FS-6d | 100% |  |  |  | start no earlier than 2023-03-24 |
| 14 | 1.8.5 | Постачання серверної шафи з ПЗ OVATION 3.8 |  | 91d | 2023-03-24 A | 2023-07-07 | 4FS-6d | 75% | 22.75d | 3.6d | 0d | start no earlier than 2023-03-24 |
| 15 | 1.8.6 | Постачання шафи ЕАБ |  | 91d | 2023-03-24 A | 2023-07-07 | 4FS-6d | 75% | 22.75d | 60d |  | start no earlier than 2023-03-24 |
| 16 | 1.8.7 | Постачання АРМ та ЕКП |  | 91d | 2023-03-24 A | 2023-07-07 | 4FS-6d | 75% | 22.75d | 60d |  | start no earlier than 2023-03-24 |
| 17 | 1.8.8 | Постачання системи електроживлення |  | 91d | 2023-03-24 A | 2023-07-07 A | 4FS-6d | 100% |  |  |  | start no earlier than 2023-03-24 |
| 18 | 1.8.9 | Постачання кабелів ЕЧСР |  | 91d | 2023-03-24 A | 2023-07-07 | 4FS-6d | 80% | 18.2d | 60d |  | start no earlier than 2023-03-24 |
| 19 | 1.8.10 | Постачання шафи серворегуляторів |  | 91d | 2023-03-24 A | 2023-07-07 | 4FS-6d | 75% | 22.75d | 60d |  | start no earlier than 2023-03-24 |
| 20 | 1.9 | **Постачання електротехнічного обладнання (Специфікація обладнання №2)** |  | 120d | 2023-03-31 A | 2023-08-17 |  | 76% | 29.12d | 25d |  |  |
| 21 | 1.9.1 | Постачання давачів |  | 87d | 2023-04-07 A | 2023-07-17 A | 4 | 100% |  |  |  | start no earlier than 2023-04-07 |
| 22 | 1.9.2 | Доукомплектуваняя обладнання системи зв'язку |  | 80d | 2023-05-17 A | 2023-08-17 | 23 | 15% | 68d | 13d | 0d |  |
| 23 | 1.9.3 | Постачання системи звязку (КуТЕС) |  | 40d | 2023-03-31 A | 2023-05-16 A | 4 | 100% |  |  |  | start no earlier than 2023-03-27 |
| 24 | 1.9.4 | Постачання шафи пожежогасіння |  | 87d | 2023-03-31 A | 2023-07-10 | 4 | 25% | 65.25d | 2d | 0d | start no earlier than 2023-03-27 |
| 25 | 1.9.5 | Постачання обладнання РСЗО із шафою вводу РСЗО |  | 25d | 2023-03-31 A | 2023-04-28 A | 4 | 100% |  |  |  | finish no earlier than 2023-04-28 |
| 26 | 1.9.6 | Доукомплектація реверсивними пускачами для РСЗО |  | 65d | 2023-04-29 A | 2023-07-13 | 25 | 80% | 13d | 55d |  |  |
| 27 | 1.9.7 | Постачання панелі електроцеху блоку №10 |  | 78d | 2023-04-11 A | 2023-07-10 | 4, 7 | 80% | 15.6d | 58d |  | start no earlier than 2023-03-27 |
| 28 | 1.9.8 | Постачання панелі електроцеху блоку №9 |  | 78d | 2023-04-11 A | 2023-07-10 | 4, 7 | 80% | 15.6d | 58d |  | start no earlier than 2023-03-31 |
| 29 | 1.9.9 | Постачання системи кондиціонування |  | 35d | 2023-04-06 A | 2023-05-16 A | 4, 8 | 100% |  |  |  | start no earlier than 2023-03-27 |
| 30 | 1.9.10 | Постачання шафи розподілу електроживлення |  | 87d | 2023-03-31 A | 2023-07-10 | 4 | 90% | 8.7d | 58d |  | start no earlier than 2023-03-27 |
| 31 | 1.9.11 | Постачання шафи віброконтролю ВСВ-700 |  | 105d | 2023-03-31 A | 2023-07-31 A | 4 | 100% |  |  |  | start no earlier than 2023-03-27 |
| 32 | 1.10 | Постачання кабельно-провідникової продукції |  | 50d | 2023-03-28 A | 2023-05-24 A |  | 100% |  |  |  | start no earlier than 2023-03-28 |
| 33 | 1.11 | Дефектування пошкодженого обладнання (сумісно) |  | 70d | 2023-03-17 A | 2023-06-06 |  | 95% | 3.5d | 87d |  | start no earlier than 2023-03-17 |

| ID | WBS | Task | Duration | Start | Finish | Predecessors | Complete | Constraint |
| --- | --- | --- | --- | --- | --- | --- | --- | --- |
| 34 | 1.12 | **Демонтажні роботи** | 88d | 2023-03-20 A | 2023-06-29 A |  | 100% |  |
| 35 | 1.12.1 | **Демонтаж БЩК** | 34d | 2023-03-20 A | 2023-04-27 A |  | 100% |  |
| 36 | 1.12.1.1 | Маркування та відключення кабелю від шаф | 24d | 2023-03-29 A | 2023-04-25 A |  | 100% | start no earlier than 2023-03-29 |
| 37 | 1.12.1.2 | Демонтаж шаф блоку 10 | 2d | 2023-04-26 A | 2023-04-27 A | 36 | 100% | start no earlier than 2023-04-03 |
| 38 | 1.12.1.3 | Демонтаж шаф блоку 9 | 10d | 2023-03-20 A | 2023-03-30 A |  | 100% | start no earlier than 2023-03-20 |
| 39 | 1.12.1.4 | Демонтаж підвісної стелі | 4d | 2023-03-27 A | 2023-03-30 A |  | 100% | start no earlier than 2023-03-27 |
| 40 | 1.12.1.5 | Демонтаж перегородок | 4d | 2023-03-27 A | 2023-03-30 A |  | 100% | start no earlier than 2023-03-27 |
| 41 | 1.12.1.6 | Демонтаж дверей | 4d | 2023-03-27 A | 2023-03-30 A |  | 100% | start no earlier than 2023-03-27 |
| 42 | 1.12.1.7 | Демонтаж гіпсокартону зі стін | 4d | 2023-03-27 A | 2023-03-30 A |  | 100% | start no earlier than 2023-03-27 |
| 43 | 1.12.1.8 | Демонтаж меблів | 4d | 2023-03-27 A | 2023-03-30 A |  | 100% | start no earlier than 2023-03-27 |
| 44 | 1.12.1.9 | Вивіз сміття з приміщення | 4d | 2023-03-27 A | 2023-03-30 A |  | 100% | start no earlier than 2023-03-27 |
| 45 | 1.12.1.10 | Демонтаж світильників | 4d | 2023-03-27 A | 2023-03-30 A |  | 100% | start no earlier than 2023-03-27 |
| 46 | 1.12.2 | **Демонтажні роботи** | 88d | 2023-03-20 A | 2023-06-29 A |  | 100% |  |
| 47 | 1.12.2.1 | Демонтаж шаф РСЗО | 3d | 2023-03-20 A | 2023-03-22 A |  | 100% | start no earlier than 2023-03-20 |
| 48 | 1.12.2.2 | Демонтаж кабелів РСЗО | 25d | 2023-03-23 A | 2023-04-20 A | 47 | 100% | start no earlier than 2023-03-23 |
| 49 | 1.12.2.3 | Демонтаж кабелів турбіни | 32d | 2023-03-23 A | 2023-04-28 A | 47 | 100% | finish no earlier than 2023-04-28 |
| 50 | 1.12.2.4 | Дефектація кабелів турбіни | 1d | 2023-04-29 A | 2023-04-29 A | 49 | 100% |  |
| 51 | 1.12.2.5 | Демонтаж металорукава | 65d | 2023-04-13 A | 2023-06-28 A | 48 | 100% | start no earlier than 2023-04-13 |
| 52 | 1.12.2.6 | Підготовка прохідних отворів для кабелю | 10d | 2023-04-03 A | 2023-04-13 A |  | 100% | start no earlier than 2023-04-03 |
| 53 | 1.12.2.7 | Відключення кабелів від механізмів | 60d | 2023-04-21 A | 2023-06-29 A | 48 | 100% | start no earlier than 2023-04-13 |
| 54 | 1.12.2.8 | Демонтаж кабельних трас | 8d | 2023-04-29 A | 2023-05-08 A | 49 | 100% | start no earlier than 2023-04-20 |
| 55 | 1.12.2.9 | Демонтаж кабелів котла | 8d | 2023-04-29 A | 2023-05-08 A | 49 | 100% | start no earlier than 2023-04-13 |
| 56 | 1.12.2.10 | Дефектація кабелів котла | 1d | 2023-05-09 A | 2023-05-09 A | 55 | 100% |  |
| 57 | 1.12.2.11 | Демонтаж давачів (відповідно переліку) | 5d | 2023-05-05 A | 2023-05-10 A | 55 | 100% | start no earlier than 2023-04-27 |
| 58 | 1.12.2.12 | Демонтаж БЕЗів та СК (відповідно переліку) | 10d | 2023-05-11 A | 2023-05-22 A | 57 | 100% | start no earlier than 2023-05-03 |

| ID | WBS | Task | Duration | Start | Finish | Predecessors | Complete | Remaining | Total slack | Free slack | Constraint |
| --- | --- | --- | --- | --- | --- | --- | --- | --- | --- | --- | --- |
| 59 | 1.13 | **Монтажні роботи** | 105d | 2023-05-02 A | 2023-08-31 |  | 72% | 29.68d | 13d |  |  |
| 60 | 1.13.1 | **Роботи з відновлення кабельних мереж** | 78d | 2023-05-02 A | 2023-07-31 |  | 86% | 11.29d | 40d |  |  |
| 61 | 1.13.1.1 | Монтаж кабельних трас | 8d | 2023-05-09 A | 2023-05-17 A | 54 | 100% |  |  |  | start no earlier than 2023-04-23 |
| 62 | 1.13.1.2 | Монтаж кабелю до РСЗО | 27d | 2023-05-02 A | 2023-06-01 A | 32FS-20d, 48 | 100% |  |  |  | start no earlier than 2023-05-01 |
| 63 | 1.13.1.3 | Монтаж кабелю турбіни | 41d | 2023-05-15 A | 2023-06-30 | 32FS-10d, 49 | 95% | 2.05d | 40d | 0d | start no earlier than 2023-05-15 |
| 64 | 1.13.1.4 | Монтаж кабелю котла | 41d | 2023-05-15 A | 2023-06-30 | 32FS-10d, 49 | 95% | 2.05d | 2d | 0d | start no earlier than 2023-05-15 |
| 65 | 1.13.1.5 | Монтаж кабелю системи пожежогасіння, зв'язку та панелі ВП блока 9 | 15d | 2023-07-14 | 2023-07-31 | 64FS+11d |  |  | 40d |  |  |
| 66 | 1.13.2 | Роботи з відновлення контрольно-вимірювальних приладів | 26d | 2023-07-01 | 2023-07-31 | 63 |  |  | 40d |  | finish no earlier than 2023-07-31 |
| 67 | 1.13.3 | Монтаж шаф РСЗО | 10d | 2023-05-15 A | 2023-05-25 A | 25 | 100% |  |  |  | start no earlier than 2023-05-15 |
| 68 | 1.13.4 | Монтаж шаф ПТК (CRS, ANF, CUA) | 12d | 2023-07-08 A | 2023-07-21 | 14 | 30% | 8.4d | 4.9d | 0d | start no earlier than 2023-05-08 |
| 69 | 1.13.5 | Монтаж шаф Base Assembly (CRA) | 12d | 2023-06-01 A | 2023-06-14 A | 12 | 100% |  |  |  |  |
| 70 | 1.13.6 | Монтаж БЕЗів та СК | 19d | 2023-06-10 A | 2023-07-01 A |  | 100% |  |  |  | start no earlier than 2023-06-10 |
| 71 | 1.13.7 | Підключення шаф РСЗО | 14d | 2023-06-26 A | 2023-07-11 A | 67 | 100% |  |  |  | start no earlier than 2023-06-26 |
| 72 | 1.13.8 | Підключення шаф Emerson | 14d | 2023-07-22 A | 2023-08-07 | 68 | 35% | 9.1d | 0d |  | start no earlier than 2023-05-22 |
| 73 | 1.13.9 | Підключення давачів | 12d | 2023-07-18 A | 2023-07-31 A | 21 | 100% |  |  |  | start no earlier than 2023-07-03 |
| 74 | 1.13.10 | Заповнення будівельною піною отворів | 2d | 2023-07-15 | 2023-07-17 | 64 |  |  | 52d |  | start no earlier than 2023-07-15 |
| 75 | 1.13.11 | Монтаж шаф ВСВ-700 | 6d | 2023-08-01 A | 2023-08-07 A | 31 | 100% |  |  |  |  |
| 76 | 1.13.12 | Монтаж системи звязку | 12d | 2023-08-18 | 2023-08-31 | 22 |  |  | 13d |  |  |
| 77 | 1.14 | **Роботи з відновлення системи освітлення ферм машзалу** | 26d | 2023-07-01 | 2023-07-31 |  |  |  | 40d |  |  |
| 78 | 1.14.1 | Демонтаж світильників ферм | 5d | 2023-07-01 | 2023-07-06 |  |  |  | 40d | 0d | start no earlier than 2023-07-01 |
| 79 | 1.14.2 | Демонтаж кабелів живлення | 5d | 2023-07-07 | 2023-07-12 | 78 |  |  | 40d | 0d | start no earlier than 2023-07-01 |
| 80 | 1.14.3 | Монтаж світильників ферм | 5d | 2023-07-13 | 2023-07-18 | 79 |  |  | 40d | 0d | start no earlier than 2023-07-01 |
| 81 | 1.14.4 | Монтаж кабелів живлення | 6d | 2023-07-19 | 2023-07-25 | 80 |  |  | 40d | 0d | start no earlier than 2023-07-01 |
| 82 | 1.14.5 | Заміна дроселів | 5d | 2023-07-26 | 2023-07-31 | 81 |  |  | 40d |  | start no earlier than 2023-07-01 |

| ID | WBS | Task | Duration | Start | Finish | Predecessors | Complete | Remaining | Total slack | Free slack | Constraint |
| --- | --- | --- | --- | --- | --- | --- | --- | --- | --- | --- | --- |
| 83 | 1.15 | **Роботи з відновлення системи освітлення КВ та турбінного** | 21d | 2023-08-14 | 2023-09-06 |  |  |  | 8d |  |  |
| 84 | 1.15.1 | Демонтаж світильників | 5d | 2023-08-14 | 2023-08-18 |  |  |  | 8d | 0d | start no earlier than 2023-08-14 |
| 85 | 1.15.2 | Демонтаж кабелів живлення | 5d | 2023-08-19 | 2023-08-24 | 84 |  |  | 8d | 0d | start no earlier than 2023-07-01 |
| 86 | 1.15.3 | Монтаж світильників | 5d | 2023-08-25 | 2023-08-30 | 85 |  |  | 8d | 0d | start no earlier than 2023-07-01 |
| 87 | 1.15.4 | Монтаж кабелів живлення | 6d | 2023-08-31 | 2023-09-06 | 86 |  |  | 8d |  | start no earlier than 2023-07-01 |
| 88 | 1.16 | **Роботи по відновленню освітлення турбінного та котельного відділіення** | 122d | 2023-03-30 A | 2023-08-18 |  | 9% | 111d | 24d |  |  |
| 89 | 1.16.1 | Дефектація | 11d | 2023-03-30 A | 2023-04-11 A |  | 100% |  |  |  | start no earlier than 2023-03-30 |
| 90 | 1.16.2 | Постачання світильників | 81d | 2023-04-12 | 2023-07-14 | 89 |  |  | 24d | 0d |  |
| 91 | 1.16.3 | Монтаж | 30d | 2023-07-15 | 2023-08-18 | 90 |  |  | 24d |  |  |
| 92 | 1.17 | **Роботи з відновлення приміщення БЩК-5** | 147d | 2023-03-27 A | 2023-09-13 |  | 64% | 52.95d | 2d |  |  |
| 93 | 1.17.1 | **Роботи з відновлення приміщення БЩК-5 (блок 10)** | 57d | 2023-04-07 A | 2023-06-12 A |  | 100% |  |  |  |  |
| 94 | 1.17.1.1 | Монтаж перегородок БЩК 10 | 11d | 2023-04-07 A | 2023-04-19 A |  | 100% |  |  |  | start no earlier than 2023-04-07 |
| 95 | 1.17.1.2 | Монтаж гіпсокартону на стінах БЩК 10 | 11d | 2023-04-20 A | 2023-05-02 A | 94 | 100% |  |  |  | start no earlier than 2023-04-07 |
| 96 | 1.17.1.3 | Монтаж внутрішніх блоків системи кондиціонування | 7d | 2023-05-17 A | 2023-05-24 A | 29 | 100% |  |  |  |  |
| 97 | 1.17.1.4 | Монтаж підвісної стелі БЩК 10 | 6d | 2023-05-25 A | 2023-05-31 A | 96 | 100% |  |  |  | start no earlier than 2023-04-22 |
| 98 | 1.17.1.5 | Монтаж кабелів системи освітлення БЩК 10 | 1d | 2023-06-01 A | 2023-06-01 A | 97 | 100% |  |  |  | start no earlier than 2023-03-27 |
| 99 | 1.17.1.6 | Монтаж світильників БЩК 10 | 3d | 2023-06-02 A | 2023-06-05 A | 98 | 100% |  |  |  | start no earlier than 2023-04-26 |
| 100 | 1.17.1.7 | Монтаж розеток та вимикачів БЩК 10 | 3d | 2023-06-02 A | 2023-06-05 A | 98 | 100% |  |  |  | start no earlier than 2023-04-26 |
| 101 | 1.17.1.8 | Монтаж дверей БЩК 10 | 5d | 2023-05-25 A | 2023-05-30 A | 94FS+30d | 100% |  |  |  | start no earlier than 2023-04-05 |
| 102 | 1.17.1.9 | Шпаклівка стін | 14d | 2023-05-03 A | 2023-05-18 A | 95 | 100% |  |  |  | start no earlier than 2023-04-07 |
| 103 | 1.17.1.10 | Фарбування стін першим шаром | 14d | 2023-05-19 A | 2023-06-03 A | 102 | 100% |  |  |  | start no earlier than 2023-04-07 |
| 104 | 1.17.1.11 | Фарбування стін другим шаром | 6d | 2023-06-05 A | 2023-06-10 A | 103 | 100% |  |  |  | start no earlier than 2023-05-01 |
| 105 | 1.17.1.12 | Монтаж шаф освітлення | 1d | 2023-06-12 A | 2023-06-12 A | 104 | 100% |  |  |  | start no earlier than 2023-04-24 |
| 106 | 1.17.2 | **Роботи з відновлення приміщення БЩК-5 (блок 9)** | 147d | 2023-03-27 A | 2023-09-13 |  | 36% | 94.7d | 2d |  |  |
| 107 | 1.17.2.1 | Відновлення перекриття підлоги | 23d | 2023-03-27 A | 2023-04-21 A |  | 100% |  |  |  | start no earlier than 2023-03-27 |
| 108 | 1.17.2.2 | Гідроізоляція стелі | 14d | 2023-04-22 A | 2023-05-08 A | 107 | 100% |  |  |  |  |
| 109 | 1.17.2.3 | Монтаж перегородок БЩК 9 | 8d | 2023-07-25 | 2023-08-02 | 64FS+20d |  |  | 2d | 0d | start no earlier than 2023-04-07 |
| 110 | 1.17.2.4 | Монтаж гіпсокартону на стінах БЩК 9 | 8d | 2023-08-03 | 2023-08-11 | 109 |  |  | 2d | 0d | start no earlier than 2023-04-07 |
| 111 | 1.17.2.5 | Монтаж підвісної стелі БЩК 9 | 4d | 2023-08-03 | 2023-08-07 | 109 |  |  | 23d | 0d | start no earlier than 2023-04-22 |
| 112 | 1.17.2.6 | Монтаж кабелів системи освітлення БЩК 9 | 8d | 2023-08-08 | 2023-08-16 | 111 |  |  | 23d | 0d | start no earlier than 2023-03-27 |
| 113 | 1.17.2.7 | Монтаж світильників БЩК 9 | 3d | 2023-08-17 | 2023-08-19 | 112 |  |  | 23d |  | start no earlier than 2023-04-26 |
| 114 | 1.17.2.8 | Монтаж розеток та вимикачів БЩК 9 | 3d | 2023-08-17 | 2023-08-19 | 112 |  |  | 23d |  | start no earlier than 2023-04-26 |
| 115 | 1.17.2.9 | Монтаж дверей БЩК 9 | 5d | 2023-09-07 | 2023-09-12 | 109FS+30d |  |  | 3d |  | start no earlier than 2023-04-05 |
| 116 | 1.17.2.10 | Шпаклівка стін | 10d | 2023-08-12 | 2023-08-23 | 110 |  |  | 2d | 0d | start no earlier than 2023-04-07 |
| 117 | 1.17.2.11 | Фарбування стін першим шаром | 10d | 2023-08-24 | 2023-09-04 | 116 |  |  | 2d | 0d | start no earlier than 2023-04-07 |
| 118 | 1.17.2.12 | Фарбування стін другим шаром | 6d | 2023-09-05 | 2023-09-11 | 117 |  |  | 2d | 0d | start no earlier than 2023-05-01 |
| 119 | 1.17.2.13 | Демонтаж тимчасової перегородки | 2d | 2023-09-12 | 2023-09-13 | 118 |  |  | 2d |  |  |
| 120 | 1.18 | Роботи з відновлення системи кондиціонування | 52d | 2023-06-01 A | 2023-07-31 A | 29 | 100% |  |  |  | start no earlier than 2023-06-01 |
| 121 | 1.19 | Роботи з відновлення системи пожежогасіння | 22d | 2023-07-11 | 2023-08-04 | 24 |  |  | 2d |  | finish no earlier than 2023-07-31 |
| 122 | 1.20 | Пусконалагоджувальні роботи (сумісно) | 25d | 2023-08-08 | 2023-09-05 | 72, 75, 120, 121 |  |  | 0d |  | start no earlier than 2023-08-01 |
| 123 | 1.21 | Випробовування (сумісно) | 6d | 2023-09-06 | 2023-09-12 | 122 |  |  | 0d |  | start no earlier than 2023-09-01 |
| 124 | 1.22 | Включення енергоблоку в мережу | 3d | 2023-09-13 | 2023-09-15 | 123 |  |  | 0d |  |  |
